# BL - Construction of Schools Program (Phase 9)

Schedule from Primavera P6, 2018-01-01 to 2019-03-29, data date 2018-01-01, costs in USD.

## Calendars

- 7-Day Workweek: Mon-Sun 08:00-16:00.

## Resources

| Resource | Group | Rate | Notes |
| --- | --- | --- | --- |
| Cost-School | equipment | 1 | ï»¿ |
| Man-Power | labor | 8 | ï»¿ |

## Schedule

| ID | WBS | Activity | Type | Duration | Start | Finish | Predecessors | Total float | Free float | Resources | Cost | L01 | L02 | L03 | L04 |
| --- | --- | --- | --- | --- | --- | --- | --- | --- | --- | --- | --- | --- | --- | --- | --- |
|  | 1 | **KEY DATES AND MILESTONES** |  |  | 2018-01-01 | 2019-03-29 |  |  |  |  |  |  |  |  |  |
| KEY-16 |  | Project Start Date | milestone | 0d | 2018-01-01 | 2018-01-01 |  | 0d |  |  |  | L01-01 | (New) | (New) | (New) |
| KEY-26 |  | Start Construction For Villa Building | milestone | 0d | 2018-01-31 | 2018-01-31 | A1010 | 0d |  |  |  | L01-01 | (New) | (New) | (New) |
| KEY-46 |  | Completion of Construction For Villa Building | milestone | 0d | 2018-11-19 | 2018-11-19 | A1190, A1290, A1320 | 0d |  |  |  | L01-01 | (New) | (New) | (New) |
| KEY-36 |  | Start Construction For External Works | milestone | 0d | 2018-11-20 | 2018-11-20 | KEY-46 | 0d |  |  |  | L01-01 | (New) | (New) | (New) |
| KEY-56 |  | Completion of Construction For External Works | milestone | 0d | 2019-02-25 | 2019-02-25 | E1081 | 12d |  |  |  | L01-01 | (New) | (New) | (New) |
| KEY-6 |  | Project Finish Date | milestone | 0d | 2019-03-29 | 2019-03-29 | A1080 | 0d |  |  |  | L01-01 | (New) | (New) | (New) |
|  | 2 | **PRELIMINARIES** |  |  | 2018-01-01 | 2018-01-30 |  |  |  |  |  |  |  |  |  |
| A1010 |  | Mobilization and Site Office Installation |  | 30d | 2018-01-01 | 2018-01-30 | KEY-16 | 0d |  | Cost-School [990000 h]; Man-Power [96 h] | 990,000 | L01-01 | (New)-1 | (New)-1 | (New)-1 |
|  | 6 | **PROCUREMENT** |  |  | 2018-01-11 | 2018-10-28 |  |  |  |  |  |  |  |  |  |
|  | 3 | **SUBCONTRACTOERS/SUPPLIERS** |  |  | 2018-01-11 | 2018-08-15 |  |  |  |  |  |  |  |  |  |
| 1-SUB-100 |  | Concrete |  | 7d | 2018-01-11 | 2018-01-17 | KEY-16 FS+10d | 17d | 0d | Man-Power [7.68 h] |  | L01-01 | (New)-2 | (New)-2 | (New)-2 |
| 1-SUB-110 |  | Block |  | 7d | 2018-02-20 | 2018-02-26 | KEY-16 FS+50d | 72d | 0d | Man-Power [7.68 h] |  | L01-01 | (New)-2 | (New)-2 | (New)-2 |
| 1-SUB-150 |  | AC Machine |  | 7d | 2018-02-20 | 2018-02-26 | KEY-16 FS+50d | 82d | 0d | Man-Power [7.68 h] |  | L01-01 | (New)-2 | (New)-2 | (New)-2 |
| 1-SUB-160 |  | Electrical |  | 7d | 2018-02-20 | 2018-02-26 | KEY-16 FS+50d | 82d | 0d | Man-Power [7.68 h] |  | L01-01 | (New)-2 | (New)-2 | (New)-2 |
| 1-SUB-170 |  | Plumbing |  | 7d | 2018-02-20 | 2018-02-26 | KEY-16 FS+50d | 82d | 0d | Man-Power [7.68 h] |  | L01-01 | (New)-2 | (New)-2 | (New)-2 |
| 1-SUB-200 |  | Fire Fighting |  | 7d | 2018-02-20 | 2018-02-26 | KEY-16 FS+50d | 82d | 0d | Man-Power [7.68 h] |  | L01-01 | (New)-2 | (New)-2 | (New)-2 |
| 1-SUB-120 |  | Ceramic |  | 7d | 2018-04-11 | 2018-04-17 | KEY-16 FS+100d | 14d | 0d | Man-Power [7.68 h] |  | L01-01 | (New)-2 | (New)-2 | (New)-2 |
| 1-SUB-130 |  | Doors and window |  | 7d | 2018-04-11 | 2018-04-17 | KEY-16 FS+100d | 26d | 0d | Man-Power [7.68 h] |  | L01-01 | (New)-2 | (New)-2 | (New)-2 |
| 1-SUB-140 |  | Wood Works |  | 7d | 2018-05-01 | 2018-05-07 | KEY-16 FS+120d | 51d | 0d | Man-Power [7.68 h] |  | L01-01 | (New)-2 | (New)-2 | (New)-2 |
| 1-SUB-180 |  | Mirrors & Bath Accessories |  | 7d | 2018-05-01 | 2018-05-07 | KEY-16 FS+120d | 212d | 0d | Man-Power [7.68 h] |  | L01-01 | (New)-2 | (New)-2 | (New)-2 |
| 1-SUB-190 |  | Landscaping |  | 7d | 2018-08-09 | 2018-08-15 | KEY-16 FS+220d | 92d | 0d | Man-Power [7.68 h] |  | L01-01 | (New)-2 | (New)-2 | (New)-2 |
|  | 1 | **MATERIAL SUBMISSION** |  |  | 2018-01-18 | 2018-08-22 |  |  |  |  |  |  |  |  |  |
| 2-MS1000 |  | Concrete |  | 7d | 2018-01-18 | 2018-01-24 | 1-SUB-100 | 17d | 0d | Man-Power [23.04 h] |  | L01-01 | (New)-2 | (New)-3 | (New)-3 |
| 2-MS1010 |  | Block |  | 7d | 2018-02-27 | 2018-03-05 | 1-SUB-110 | 72d | 0d | Man-Power [23.04 h] |  | L01-01 | (New)-2 | (New)-3 | (New)-3 |
| 2-MS1050 |  | AC Machine |  | 7d | 2018-02-27 | 2018-03-05 | 1-SUB-150 | 82d | 0d | Man-Power [23.04 h] |  | L01-01 | (New)-2 | (New)-3 | (New)-3 |
| 2-MS1060 |  | Electrical |  | 7d | 2018-02-27 | 2018-03-05 | 1-SUB-160 | 82d | 0d | Man-Power [23.04 h] |  | L01-01 | (New)-2 | (New)-3 | (New)-3 |
| 2-MS1070 |  | Plumbing |  | 7d | 2018-02-27 | 2018-03-05 | 1-SUB-170 | 82d | 0d | Man-Power [23.04 h] |  | L01-01 | (New)-2 | (New)-3 | (New)-3 |
| 2-MS1100 |  | Fire Fighting |  | 7d | 2018-02-27 | 2018-03-05 | 1-SUB-200 | 82d | 0d | Man-Power [23.04 h] |  | L01-01 | (New)-2 | (New)-3 | (New)-3 |
| 2-MS1020 |  | Ceramic |  | 7d | 2018-04-18 | 2018-04-24 | 1-SUB-120 | 14d | 0d | Man-Power [23.04 h] |  | L01-01 | (New)-2 | (New)-3 | (New)-3 |
| 2-MS1030 |  | Doors and window |  | 7d | 2018-04-18 | 2018-04-24 | 1-SUB-130 | 26d | 0d | Man-Power [23.04 h] |  | L01-01 | (New)-2 | (New)-3 | (New)-3 |
| 2-MS1040 |  | Wood Works |  | 7d | 2018-05-08 | 2018-05-14 | 1-SUB-140 | 51d | 0d | Man-Power [100 h] |  | L01-01 | (New)-2 | (New)-3 | (New)-3 |
| 2-MS1080 |  | Mirrors & Bath Accessories |  | 7d | 2018-05-08 | 2018-05-14 | 1-SUB-180 | 212d | 0d | Man-Power [11.52 h] |  | L01-01 | (New)-2 | (New)-3 | (New)-3 |
| 2-MS1090 |  | Landscaping |  | 7d | 2018-08-16 | 2018-08-22 | 1-SUB-190 | 92d | 0d | Man-Power [150 h] |  | L01-01 | (New)-2 | (New)-3 | (New)-3 |

| ID | WBS | Activity | Duration | Start | Finish | Predecessors | Total float | Free float | Resources | L01 | L02 | L03 | L04 |
| --- | --- | --- | --- | --- | --- | --- | --- | --- | --- | --- | --- | --- | --- |
|  | 2 | **MATERIAL APPROVAL** |  | 2018-01-25 | 2018-08-29 |  |  |  |  |  |  |  |  |
| 3-MA1000 |  | Concrete | 7d | 2018-01-25 | 2018-01-31 | 2-MS1000 | 17d | 0d | Man-Power [61.44 h] | L01-01 | (New)-2 | (New)-4 | (New)-4 |
| 3-MA1010 |  | Block | 7d | 2018-03-06 | 2018-03-12 | 2-MS1010 | 72d | 0d | Man-Power [61.44 h] | L01-01 | (New)-2 | (New)-4 | (New)-4 |
| 3-MA1050 |  | AC Machine | 7d | 2018-03-06 | 2018-03-12 | 2-MS1050 | 82d | 0d | Man-Power [61.44 h] | L01-01 | (New)-2 | (New)-4 | (New)-4 |
| 3-MA1060 |  | Electrical | 7d | 2018-03-06 | 2018-03-12 | 2-MS1060 | 82d | 0d | Man-Power [61.44 h] | L01-01 | (New)-2 | (New)-4 | (New)-4 |
| 3-MA1070 |  | Plumbing | 7d | 2018-03-06 | 2018-03-12 | 2-MS1070 | 82d | 0d | Man-Power [61.44 h] | L01-01 | (New)-2 | (New)-4 | (New)-4 |
| 3-MA1100 |  | Fire Fighting | 7d | 2018-03-06 | 2018-03-12 | 2-MS1100 | 82d | 0d | Man-Power [61.44 h] | L01-01 | (New)-2 | (New)-4 | (New)-4 |
| 3-MA1020 |  | Ceramic | 7d | 2018-04-25 | 2018-05-01 | 2-MS1020 | 14d | 0d | Man-Power [61.44 h] | L01-01 | (New)-2 | (New)-4 | (New)-4 |
| 3-MA1030 |  | Doors and window | 7d | 2018-04-25 | 2018-05-01 | 2-MS1030 | 26d | 0d | Man-Power [61.44 h] | L01-01 | (New)-2 | (New)-4 | (New)-4 |
| 3-MA1040 |  | Wood Works | 7d | 2018-05-15 | 2018-05-21 | 2-MS1040 | 51d | 0d | Man-Power [100 h] | L01-01 | (New)-2 | (New)-4 | (New)-4 |
| 3-MA1080 |  | Mirrors & Bath Accessories | 7d | 2018-05-15 | 2018-05-21 | 2-MS1080 | 212d | 0d | Man-Power [61.44 h] | L01-01 | (New)-2 | (New)-4 | (New)-4 |
| 3-MA1090 |  | Landscaping | 7d | 2018-08-23 | 2018-08-29 | 2-MS1090 | 92d | 0d | Man-Power [100 h] | L01-01 | (New)-2 | (New)-4 | (New)-4 |
|  | 5 | **MATERIAL DEVIVERY** |  | 2018-02-01 | 2018-10-28 |  |  |  |  |  |  |  |  |
| 4-MD1000 |  | Concrete | 7d | 2018-02-01 | 2018-02-07 | 3-MA1000 | 17d |  | Man-Power [7.68 h] | L01-01 | (New)-2 | (New)-5 | (New)-5 |
| 4-MD1010 |  | Block | 7d | 2018-03-13 | 2018-03-19 | 3-MA1010 | 72d |  | Man-Power [7.68 h] | L01-01 | (New)-2 | (New)-5 | (New)-5 |
| 4-MD1050 |  | AC Machine | 60d | 2018-03-13 | 2018-05-11 | 3-MA1050 | 82d | 76d | Man-Power [7.68 h] | L01-01 | (New)-2 | (New)-5 | (New)-5 |
| 4-MD1060 |  | Electrical | 60d | 2018-03-13 | 2018-05-11 | 3-MA1060 | 82d | 76d | Man-Power [7.68 h] | L01-01 | (New)-2 | (New)-5 | (New)-5 |
| 4-MD1070 |  | Plumbing | 60d | 2018-03-13 | 2018-05-11 | 3-MA1070 | 82d | 76d | Man-Power [7.68 h] | L01-01 | (New)-2 | (New)-5 | (New)-5 |
| 4-MD1100 |  | Fire Fighting | 60d | 2018-03-13 | 2018-05-11 | 3-MA1100 | 82d | 76d | Man-Power [7.68 h] | L01-01 | (New)-2 | (New)-5 | (New)-5 |
| 4-MD1020 |  | Ceramic | 60d | 2018-05-02 | 2018-06-30 | 3-MA1020 | 14d |  | Man-Power [50 h] | L01-01 | (New)-2 | (New)-5 | (New)-5 |
| 4-MD1030 |  | Doors and window | 60d | 2018-05-02 | 2018-06-30 | 3-MA1030 | 26d |  | Man-Power [50 h] | L01-01 | (New)-2 | (New)-5 | (New)-5 |
| 4-MD1040 |  | Wood Works | 60d | 2018-05-22 | 2018-07-20 | 3-MA1040 | 51d |  | Man-Power [100 h] | L01-01 | (New)-2 | (New)-5 | (New)-5 |
| 4-MD1080 |  | Mirrors & Bath Accessories | 60d | 2018-05-22 | 2018-07-20 | 3-MA1080 | 212d | 155d | Man-Power [8 h] | L01-01 | (New)-2 | (New)-5 | (New)-5 |
| 4-MD1090 |  | Landscaping | 60d | 2018-08-30 | 2018-10-28 | 3-MA1090 | 92d | 80d | Man-Power [200 h] | L01-01 | (New)-2 | (New)-5 | (New)-5 |

| ID | WBS | Activity | Duration | Start | Finish | Predecessors | Total float | Free float | Resources | Cost | L01 | L02 | L03 | L04 |
| --- | --- | --- | --- | --- | --- | --- | --- | --- | --- | --- | --- | --- | --- | --- |
|  | 3 | **ENGINEERING** |  | 2018-03-02 | 2018-05-28 |  |  |  |  |  |  |  |  |  |
|  | 1 | **SHOPDAWINGS SUBMITTAL** |  | 2018-03-02 | 2018-05-14 |  |  |  |  |  |  |  |  |  |
| 1-SDS100 |  | Structural Drawings | 14d | 2018-03-02 | 2018-03-15 | KEY-16 FS+60d | 12d | 0d | Man-Power [20 h] |  | L01-01 | (New)-3 | (New)-6 | (New)-6 |
| 1-SDS110 |  | Finishes Drawings | 14d | 2018-04-11 | 2018-04-24 | KEY-16 FS+100d | 22d | 0d | Man-Power [123 h] |  | L01-01 | (New)-3 | (New)-6 | (New)-6 |
| 1-SDS120 |  | Mechanical Drawings | 14d | 2018-05-01 | 2018-05-14 | KEY-16 FS+120d | 65d | 0d | Man-Power [20 h] |  | L01-01 | (New)-3 | (New)-6 | (New)-6 |
| 1-SDS130 |  | Electrical Drawings | 14d | 2018-05-01 | 2018-05-14 | KEY-16 FS+120d | 65d | 0d | Man-Power [20 h] |  | L01-01 | (New)-3 | (New)-6 | (New)-6 |
| 1-SDS140 |  | Fire Fighting Drawings | 14d | 2018-05-01 | 2018-05-14 | KEY-16 FS+120d | 65d | 0d | Man-Power [20 h] |  | L01-01 | (New)-3 | (New)-6 | (New)-6 |
| 1-SDS150 |  | Plumbing Drawings | 14d | 2018-05-01 | 2018-05-14 | KEY-16 FS+120d | 65d | 0d | Man-Power [20 h] |  | L01-01 | (New)-3 | (New)-6 | (New)-6 |
|  | 2 | **SHOPDAWINGS APPROVAL** |  | 2018-03-16 | 2018-05-28 |  |  |  |  |  |  |  |  |  |
| 2-SDA1000 |  | Structural Drawings | 14d | 2018-03-16 | 2018-03-29 | 1-SDS100 | 12d |  | Man-Power [61.44 h] |  | L01-01 | (New)-3 | (New)-7 | (New)-7 |
| 2-SDA1010 |  | Finishes Drawings | 14d | 2018-04-25 | 2018-05-08 | 1-SDS110 | 22d |  | Man-Power [61.44 h] |  | L01-01 | (New)-3 | (New)-7 | (New)-7 |
| 2-SDA1020 |  | Mechanical Drawings | 14d | 2018-05-15 | 2018-05-28 | 1-SDS120 | 65d | 59d | Man-Power [61.44 h] |  | L01-01 | (New)-3 | (New)-7 | (New)-7 |
| 2-SDA1030 |  | Electrical Drawings | 14d | 2018-05-15 | 2018-05-28 | 1-SDS130 | 65d | 59d | Man-Power [61.44 h] |  | L01-01 | (New)-3 | (New)-7 | (New)-7 |
| 2-SDA1040 |  | Fire Fighting Drawings | 14d | 2018-05-15 | 2018-05-28 | 1-SDS140 | 65d | 59d | Man-Power [15.36 h] |  | L01-01 | (New)-3 | (New)-7 | (New)-7 |
| 2-SDA1050 |  | Plumbing Drawings | 14d | 2018-05-15 | 2018-05-28 | 1-SDS150 | 65d | 59d | Man-Power [61.44 h] |  | L01-01 | (New)-3 | (New)-7 | (New)-7 |
|  | 4 | **CONSTRUCTION** |  | 2018-01-31 | 2019-03-09 |  |  |  |  |  |  |  |  |  |
|  | 1 | **BUILDING WORKS** |  | 2018-01-31 | 2019-01-11 |  |  |  |  |  |  |  |  |  |
|  | 3 | **CONCRETE WORKS** |  | 2018-01-31 | 2018-06-11 |  |  |  |  |  |  |  |  |  |
|  | 1 | **SUB-STRUCTRE** |  | 2018-01-31 | 2018-04-10 |  |  |  |  |  |  |  |  |  |
| A1030 |  | Excavation Works | 25d | 2018-01-31 | 2018-02-24 | KEY-26 | 0d |  | Cost-School [1342000 h]; Man-Power [250 h] | 1,342,000 | L01-01 | (New)-4 | (New)-8 | (New)-8 |
| A1050 |  | Foundation Works | 45d | 2018-02-25 | 2018-04-10 | A1030, 4-MD1000 | 0d |  | Cost-School [2662000 h]; Man-Power [100 h] | 2,662,000 | L01-01 | (New)-4 | (New)-8 | (New)-8 |
|  | 2 | **GROUND FLOOR** |  | 2018-04-11 | 2018-05-15 |  |  |  |  |  |  |  |  |  |
| A1210 |  | Ground Floor Slab | 20d | 2018-04-11 | 2018-04-30 | A1050, 2-SDA1000 | 0d |  | Cost-School [2662000 h]; Man-Power [346 h] | 2,662,000 | L01-01 | (New)-4 | (New)-8 | (New)-9 |
| A1220 |  | Ground Floor Columns | 15d | 2018-05-01 | 2018-05-15 | A1210 | 0d |  | Cost-School [2662000 h]; Man-Power [20 h] | 2,662,000 | L01-01 | (New)-4 | (New)-8 | (New)-9 |

| ID | WBS | Activity | Duration | Start | Finish | Predecessors | Total float | Free float | Resources | Cost | L01 | L02 | L03 | L04 |
| --- | --- | --- | --- | --- | --- | --- | --- | --- | --- | --- | --- | --- | --- | --- |
|  | 3 | **ROOF** |  | 2018-05-16 | 2018-06-11 |  |  |  |  |  |  |  |  |  |
| A1230 |  | Roof Slab | 15d | 2018-05-16 | 2018-05-30 | A1220 | 0d |  | Cost-School [1342000 h]; Man-Power [50 h] | 1,342,000 | L01-01 | (New)-4 | (New)-8 | (New)-10 |
| A1240 |  | Parapet | 12d | 2018-05-31 | 2018-06-11 | A1230 | 136d | 33d | Cost-School [2662000 h]; Man-Power [184 h] | 2,662,000 | L01-01 | (New)-4 | (New)-8 | (New)-10 |
|  | 6 | **FINISHES** |  | 2018-05-31 | 2019-01-11 |  |  |  |  |  |  |  |  |  |
|  | 2 | **GROUND FLOOR** |  | 2018-05-31 | 2019-01-11 |  |  |  |  |  |  |  |  |  |
| A1250 |  | Block Works | 20d | 2018-05-31 | 2018-06-19 | A1230, 4-MD1010, 2-SDA1010 | 0d |  | Cost-School [2186800 h]; Man-Power [200 h] | 2,186,800 | L01-01 | (New)-4 | (New)-8 | (New)-11 |
| A1260 |  | Plaster | 15d | 2018-06-30 | 2018-07-14 | A1250, A1170 | 0d |  | Cost-School [2640000 h]; Man-Power [312 h] | 2,640,000 | L01-01 | (New)-4 | (New)-8 | (New)-11 |
| A1270 |  | Ceramic | 12d | 2018-07-15 | 2018-07-26 | A1260, 4-MD1020 | 0d |  | Cost-School [2640000 h]; Man-Power [412.8 h] | 2,640,000 | L01-01 | (New)-4 | (New)-8 | (New)-11 |
| A1300 |  | Doors and windows Works | 15d | 2018-07-27 | 2018-08-10 | A1270, 4-MD1030 | 0d |  | Cost-School [3960000 h]; Man-Power [201.6 h] | 3,960,000 | L01-01 | (New)-4 | (New)-8 | (New)-11 |
| A1340 |  | Epoxy Coating-Services Area | 30d | 2018-08-11 | 2018-09-09 | A1300 | 0d |  | Cost-School [3960000 h]; Man-Power [120 h] | 3,960,000 | L01-01 | (New)-4 | (New)-8 | (New)-11 |
| A1280 |  | Ceiling Works | 30d | 2018-08-26 | 2018-09-24 | A1270, A1180 | 6d |  | Cost-School [2860000 h]; Man-Power [314 h] | 2,860,000 | L01-01 | (New)-4 | (New)-8 | (New)-11 |
| A1350 |  | Kitchen Cabinets | 12d | 2018-09-10 | 2018-09-21 | A1300, 4-MD1040, A1340 | 0d |  | Cost-School [3740000 h]; Man-Power [316 h] | 3,740,000 | L01-01 | (New)-4 | (New)-8 | (New)-11 |
| A1360 |  | Vanity Counter | 4d | 2018-09-22 | 2018-09-25 | A1300, A1350, A1350 FF | 0d |  | Cost-School [2860000 h]; Man-Power [300 h] | 2,860,000 | L01-01 | (New)-4 | (New)-8 | (New)-11 |
| A1370 |  | Wooden Doors | 5d | 2018-09-26 | 2018-09-30 | A1300, A1360, A1280 FF | 0d |  | Cost-School [1540000 h]; Man-Power [300 h] | 1,540,000 | L01-01 | (New)-4 | (New)-8 | (New)-11 |
| A1290 |  | Painting - 1st Coat | 10d | 2018-10-01 | 2018-10-10 | A1280, A1370 | 0d |  | Cost-School [6820000 h]; Man-Power [488 h] | 6,820,000 | L01-01 | (New)-4 | (New)-8 | (New)-11 |
| A1380 |  | Wardrobes | 50d | 2018-10-31 | 2018-12-19 | A1300, A1370, A1290 FS+20d | 57d | 0d | Cost-School [6160000 h]; Man-Power [688 h] | 6,160,000 | L01-01 | (New)-4 | (New)-8 | (New)-11 |
| A1330 |  | Painting Final Coat | 8d | 2018-12-15 | 2018-12-22 | A1300, A1350, A1360, A1370, A1380 FS-5d, A1380 FF, A1380 SS | 57d | 0d | Cost-School [440000 h]; Man-Power [50 h] | 440,000 | L01-01 | (New)-4 | (New)-8 | (New)-11 |
| A1390 |  | Mirrors & Bath Accessories | 20d | 2018-12-23 | 2019-01-11 | A1300, 4-MD1080, A1290 FS+15d, A1330 | 57d |  | Cost-School [880000 h]; Man-Power [50 h] | 880,000 | L01-01 | (New)-4 | (New)-8 | (New)-11 |
|  | 3 | **ROOF** |  | 2018-05-31 | 2018-08-08 |  |  |  |  |  |  |  |  |  |
| A1410 |  | Roof Waterproofing woks | 5d | 2018-05-31 | 2018-06-04 | A1230 | 278d |  | Cost-School [2200 h]; Man-Power [100 h] | 2,200 | L01-01 | (New)-4 | (New)-8 | (New)-12 |
| A1310 |  | Plaster | 10d | 2018-07-15 | 2018-07-24 | A1240, A1260 | 103d | 0d | Cost-School [22000 h]; Man-Power [115.2 h] | 22,000 | L01-01 | (New)-4 | (New)-8 | (New)-12 |
| A1320 |  | Painting | 15d | 2018-07-25 | 2018-08-08 | A1310 | 103d |  | Cost-School [3080 h]; Man-Power [96 h] | 3,080 | L01-01 | (New)-4 | (New)-8 | (New)-12 |
| A1400 |  | Balcony Handrails | 5d | 2018-07-25 | 2018-07-29 | A1310 | 223d |  | Cost-School [1320 h]; Man-Power [24 h] | 1,320 | L01-01 | (New)-4 | (New)-8 | (New)-12 |
|  | 4 | **SERVICES** |  | 2018-06-20 | 2018-11-19 |  |  |  |  |  |  |  |  |  |
| A1170 |  | MEP 1St FIX (Conduits, pipes inside walls) | 10d | 2018-06-20 | 2018-06-29 | A1250 | 0d |  | Cost-School [1669800 h]; Man-Power [450 h] | 1,669,800 | L01-01 | (New)-4 | (New)-8 | (New)-13 |
| A1180 |  | MEP 2nd Fix (above ceiling AC and Electrical Works) | 30d | 2018-07-27 | 2018-08-25 | A1270, 4-MD1050, 4-MD1060, 4-MD1070, 4-MD1100, 2-SDA1020, 2-SDA1040, 2-SDA1050, 2-SDA1030 | 6d | 0d | Cost-School [4569400 h]; Man-Power [964 h] | 4,569,400 | L01-01 | (New)-4 | (New)-8 | (New)-13 |
| A1190 |  | MEP Final Fix (Light fixtures ,fire alarm ,AC diffusers ) | 40d | 2018-10-11 | 2018-11-19 | A1180, A1290 | 0d |  | Cost-School [5618800 h]; Man-Power [800 h] | 5,618,800 | L01-01 | (New)-4 | (New)-8 | (New)-13 |

| ID | WBS | Activity | Duration | Start | Finish | Predecessors | Total float | Free float | Resources | Cost | L01 | L02 | L03 | L04 |
| --- | --- | --- | --- | --- | --- | --- | --- | --- | --- | --- | --- | --- | --- | --- |
|  | 5 | **EXTERNAL WORKS** |  | 2018-11-20 | 2019-03-09 |  |  |  |  |  |  |  |  |  |
| E1070 |  | Fence Works | 50d | 2018-11-20 | 2019-01-08 | KEY-36 | 0d |  | Cost-School [4840000 h]; Man-Power [600 h] | 4,840,000 | L01-01 | (New)-4 | (New)-9 | (New)-14 |
| E1071 |  | External Tiling Works | 25d | 2019-01-09 | 2019-02-02 | E1070 | 35d |  | Cost-School [880000 h]; Man-Power [250 h] | 880,000 | L01-01 | (New)-4 | (New)-9 | (New)-14 |
| E1080 |  | Installation of Wheel Stopper & Corner Gaurd | 60d | 2019-01-09 | 2019-03-09 | E1070 | 0d |  | Cost-School [2420000 h]; Man-Power [100 h] | 2,420,000 | L01-01 | (New)-4 | (New)-9 | (New)-14 |
| E1081 |  | Green Area Works | 40d | 2019-01-17 | 2019-02-25 | E1070 FS+8d, 4-MD1090 | 12d | 0d | Cost-School; Man-Power [46 h] |  | L01-01 | (New)-4 | (New)-9 | (New)-14 |
|  | 5 | **HANDING OVER** |  | 2018-12-30 | 2019-03-29 |  |  |  |  |  |  |  |  |  |
| HOV110 |  | Submission of As Built Drawings | 10d | 2018-12-30 | 2019-01-08 | E1070 FF | 60d |  | Man-Power [24 h]; Cost-School [22000 h] | 22,000 | L01-01 | (New)-5 | (New)-10 | (New)-15 |
| A1080 |  | Project Handing Over and Authority approvals | 20d | 2019-03-10 | 2019-03-29 | E1071, A1190 SS, E1081, A1320, KEY-56, A1410, A1400, HOV110, A1340, A1390, A1330, E1080 | 0d |  | Man-Power [50 h]; Cost-School [8800 h] | 8,800 | L01-01 | (New)-5 | (New)-10 | (New)-15 |

## Activity codes

| Code | Value | Meaning |
| --- | --- | --- |
| L01 | L01-01 | Construction of Schools Program (Phase 9) |
| L02 | (New) | KEY DATES AND MILESTONES |
| L02 | (New)-1 | PRELIMINARIES |
| L02 | (New)-2 | PROCUREMENT |
| L02 | (New)-3 | ENGINEERING |
| L02 | (New)-4 | CONSTRUCTION |
| L02 | (New)-5 | HANDING OVER |
| L03 | (New) | KEY DATES AND MILESTONES |
| L03 | (New)-1 | PRELIMINARIES |
| L03 | (New)-10 | HANDING OVER |
| L03 | (New)-2 | SUBCONTRACTOERS/SUPPLIERS |
| L03 | (New)-3 | MATERIAL SUBMISSION |
| L03 | (New)-4 | MATERIAL APPROVAL |
| L03 | (New)-5 | MATERIAL DEVIVERY |
| L03 | (New)-6 | SHOPDAWINGS SUBMITTAL |
| L03 | (New)-7 | SHOPDAWINGS APPROVAL |
| L03 | (New)-8 | VILLA BUILDING WORKS |
| L03 | (New)-9 | EXTERNAL WORKS |
| L04 | (New) | KEY DATES AND MILESTONES |
| L04 | (New)-1 | PRELIMINARIES |
| L04 | (New)-10 | ROOF |
| L04 | (New)-11 | GROUND FLOOR |
| L04 | (New)-12 | ROOF |
| L04 | (New)-13 | SERVICES |
| L04 | (New)-14 | EXTERNAL WORKS |
| L04 | (New)-15 | HANDING OVER |
| L04 | (New)-2 | SUBCONTRACTOERS/SUPPLIERS |
| L04 | (New)-3 | MATERIAL SUBMISSION |
| L04 | (New)-4 | MATERIAL APPROVAL |
| L04 | (New)-5 | MATERIAL DEVIVERY |
| L04 | (New)-6 | SHOPDAWINGS SUBMITTAL |
| L04 | (New)-7 | SHOPDAWINGS APPROVAL |
| L04 | (New)-8 | SUB-STRUCTRE |
| L04 | (New)-9 | GROUND FLOOR |
